# lg V.4

Schedule from MS Project, 2012-04-04 to 2012-10-10.

## Calendars

- Standard: Mon-Fri 08:00-12:00, 13:00-17:00; Sat-Sun off. Exceptions (off unless hours are given): 2012-07-21 09:00-13:00, 15:00-19:00.

## Resources

| Resource |
| --- |
| Unassigned |
| adji_awe |
| adji |
| awe |
| prosegur |
| permaquim |
| web |

## Schedule

| ID | WBS | Task | Duration | Start | Finish | Predecessors | Total slack | Free slack | Constraint |
| --- | --- | --- | --- | --- | --- | --- | --- | --- | --- |
| 1 | 1 | **RESUMEN** | 136.38d? | 2012-04-04 | 2012-10-10 |  | 0d |  |  |
| 2 | 1.1 | Diseño funcional | 92d | 2012-04-04 | 2012-08-09 |  | 44.38d |  | finish no earlier than 2012-08-09 |
| 3 | 1.2 | **Electrónica** | 111d | 2012-04-19 | 2012-09-19 |  | 15d |  |  |
| 4 | 1.2.1 | Evaluacion modulos ada | 4d | 2012-07-02 | 2012-07-05 |  | 70d |  |  |
| 5 | 1.2.2 | **Research placa** | 102d | 2012-05-02 | 2012-09-19 |  | 15d |  |  |
| 6 | 1.2.2.1 | Research programador | 27d | 2012-05-02 | 2012-06-07 |  | 15d | 0d | start no earlier than 2012-05-02 |
| 7 | 1.2.2.2 | Relevamiento pcb | 11d | 2012-06-08 | 2012-06-22 | 6 | 15d | 0d |  |
| 8 | 1.2.2.3 | Cables para conexion del programador y la esclusa | 14d | 2012-06-25 | 2012-07-12 | 7 | 15d | 0d |  |
| 9 | 1.2.2.4 | circuito de la placa | 15d | 2012-07-13 | 2012-08-01 | 8 | 15d | 0d | start no earlier than 2012-05-17 |
| 10 | 1.2.2.5 | Test placa con esclusa | 35d | 2012-08-02 | 2012-09-19 | 9 | 15d |  |  |
| 11 | 1.2.3 | **Programacion placa** | 72d | 2012-04-19 | 2012-07-26 |  | 54d |  |  |
| 12 | 1.2.3.1 | **Programacion de la version final del software de la placa.** | 70d | 2012-04-19 | 2012-07-24 |  | 56d |  |  |
| 13 | 1.2.3.1.1 | programacion del pic, configuracion de las entradas / salida | 70d | 2012-04-19 | 2012-07-24 |  | 56d |  | start no earlier than 2012-04-19 |
| 14 | 1.2.3.1.2 | research pickit, compiladores, cables | 10d | 2012-05-02 | 2012-05-15 |  | 47d | 0d | start no earlier than 2012-05-02 |
| 15 | 1.2.3.1.3 | usar overrun problem, interrupt for reading. | 8d | 2012-05-16 | 2012-05-25 | 14 | 47d | 0d |  |
| 16 | 1.2.3.1.4 | usar circular buffe | 9d | 2012-05-28 | 2012-06-07 | 15 | 47d | 0d |  |
| 17 | 1.2.3.1.5 | usar bug fixing | 4d | 2012-06-08 | 2012-06-13 | 16 | 47d | 0d |  |
| 18 | 1.2.3.1.6 | pic, print inputs. command start | 6d | 2012-06-14 | 2012-06-21 | 17 | 47d | 0d |  |
| 19 | 1.2.3.2 | Test funcionales. | 5d | 2012-06-22 | 2012-06-28 | 18 | 47d | 0d |  |
| 20 | 1.2.3.3 | Bug Fixing. | 7d | 2012-06-29 | 2012-07-09 | 19 | 47d | 0d |  |
| 21 | 1.2.3.4 | Documentacion | 14d | 2012-07-10 | 2012-07-26 | 20 | 47d | 0d |  |
| 22 | 1.3 | Selección de componentes | 25d | 2012-06-25 | 2012-07-26 |  | 47d | 0d | start no earlier than 2012-06-25 |
| 23 | 1.4 | Definición de los niveles de seguridad | 7d | 2012-07-27 | 2012-08-06 | 21, 22 | 47d |  |  |
| 24 | 1.5 | Comunicación con la Glory | 54d | 2012-05-04 | 2012-07-19 |  | 60.38d |  | finish no earlier than 2012-07-19 |

| ID | WBS | Task | Type | Duration | Start | Finish | Predecessors | Total slack | Free slack | Constraint |
| --- | --- | --- | --- | --- | --- | --- | --- | --- | --- | --- |
| 25 | 1.6 | **Aplicación** |  | 117d? | 2012-05-02 | 2012-10-10 |  | 0d |  |  |
| 26 | 1.6.1 | **Diseño** |  | 20d | 2012-07-02 | 2012-07-26 |  | 54d |  |  |
| 27 | 1.6.1.1 | Revision de requerimientos |  | 10d | 2012-07-02 | 2012-07-13 |  | 54d | 0d |  |
| 28 | 1.6.1.2 | Determinacion de alcance y diseño inicial |  | 10d | 2012-07-16 | 2012-07-26 | 27 | 54d |  |  |
| 29 | 1.6.1.3 | **DB** |  | 5d | 2012-07-16 | 2012-07-20 |  | 59d |  |  |
| 30 | 1.6.1.3.1 | Modelo inicial |  | 2d | 2012-07-16 | 2012-07-17 | 27 | 59d | 0d |  |
| 31 | 1.6.1.3.2 | Presentacion de solucion |  | 1d | 2012-07-18 | 2012-07-18 | 30 | 59d | 0d |  |
| 32 | 1.6.1.3.3 | Aprobacion modelo |  | 2d | 2012-07-19 | 2012-07-20 | 31 | 59d |  |  |
| 33 | 1.6.1.3.4 | Modelo de datos completo | milestone | 0d | 2012-07-17 | 2012-07-17 |  | 63d |  | start no earlier than 2012-07-17 |
| 34 | 1.6.2 | **Desarrollo** |  | 80d? | 2012-05-02 | 2012-08-21 |  | 0d |  |  |
| 35 | 1.6.2.1 | **Comunicacion Glory** |  | 66d? | 2012-05-02 | 2012-07-31 |  | 0d |  |  |
| 36 | 1.6.2.1.1 | Comunicación entre la Glory y la PC |  | 10d | 2012-05-02 | 2012-05-15 |  | 0d |  | must start on 2012-05-02 |
| 37 | 1.6.2.1.2 | Glory, counting, problem with escrow |  | 12d | 2012-05-16 | 2012-05-31 | 36 | 55d | 0d | start no earlier than 2012-05-02 |
| 38 | 1.6.2.1.3 | Manejo del puerto serie en java. |  | 5d | 2012-06-01 | 2012-06-07 | 37 | 55d | 0d | start no earlier than 2012-05-02 |
| 39 | 1.6.2.1.4 | Database schema. Herramientas: eclipse, play, bootstrap, virtual keyboard, websockets |  | 7d | 2012-06-08 | 2012-06-18 | 38 | 55d | 0d | start no earlier than 2012-05-02 |
| 40 | 1.6.2.1.5 | Play framework |  | 3d | 2012-06-19 | 2012-06-21 | 39 | 55d | 0d | start no earlier than 2012-05-02 |
| 41 | 1.6.2.1.6 | Manejo del puerto serie en java. |  | 8d | 2012-06-22 | 2012-07-03 | 40 | 55d | 4d | start no earlier than 2012-05-02 |
| 42 | 1.6.2.1.7 | Definicion de la api de Glory |  | 15d | 2012-07-10 | 2012-07-27 | 52, 41 | 51d | 0d |  |
| 43 | 1.6.2.1.8 | Slots de billetes, integracion con la app |  | 2d | 2012-07-30 | 2012-07-31 | 42 | 51d |  |  |
| 44 | 1.6.2.1.9 | Stress test en la maquina |  | 1d? | 2012-07-02 | 2012-07-02 |  | 73d |  |  |
| 45 | 1.6.2.1.10 | Database schema and import |  | 1d? | 2012-07-02 | 2012-07-02 |  | 73d |  |  |
| 46 | 1.6.2.2 | **Comunicacion placa** |  | 4d | 2012-07-02 | 2012-07-05 |  | 70d |  |  |
| 47 | 1.6.2.2.1 | Definicion de la api |  | 4d | 2012-07-02 | 2012-07-05 |  | 70d |  |  |
| 48 | 1.6.2.3 | **Comunicacion Prosegur** |  | 4d | 2012-07-02 | 2012-07-05 |  | 70d |  |  |
| 49 | 1.6.2.3.1 | Defincion de funcionalidades |  | 2d | 2012-07-02 | 2012-07-03 |  | 72d |  |  |
| 50 | 1.6.2.3.2 | Implementacion de la libreria |  | 4d | 2012-07-02 | 2012-07-05 |  | 70d |  |  |

| ID | WBS | Task | Type | Duration | Start | Finish | Predecessors | Total slack | Free slack | Constraint |
| --- | --- | --- | --- | --- | --- | --- | --- | --- | --- | --- |
| 51 | 1.6.2.4 | **Aplicacion web** |  | 6d | 2012-07-02 | 2012-07-09 |  | 16d | 0d |  |
| 52 | 1.6.2.4.1 | Diseño general |  | 6d | 2012-07-02 | 2012-07-09 |  | 16d | 0d |  |
| 53 | 1.6.2.5 | Presentacion de la estetica general | milestone | 0d | 2012-08-21 | 2012-08-21 | 52 | 37d |  | start no earlier than 2012-08-21 |
| 54 | 1.6.2.6 | **Implementacion de casos de uso** |  | 16d | 2012-07-10 | 2012-07-30 | 52 | 16d | 0d |  |
| 55 | 1.6.2.6.1 | **Pantallas** |  | 16d | 2012-07-10 | 2012-07-30 |  | 16d |  |  |
| 56 | 1.6.2.6.1.1 | **Pantalla de inicio** |  | 1d | 2012-07-10 | 2012-07-10 | 51 | 16d | 0d |  |
| 57 | 1.6.2.6.1.1.1 | Diseño |  | 1d | 2012-07-10 | 2012-07-10 |  | 16d |  |  |
| 58 | 1.6.2.6.1.1.2 | Implementacion |  | 1d | 2012-07-10 | 2012-07-10 |  | 16d |  |  |
| 59 | 1.6.2.6.1.2 | **Iniciar Sesion** |  | 2d | 2012-07-11 | 2012-07-12 | 56 | 16d | 0d |  |
| 60 | 1.6.2.6.1.2.1 | Diseño |  | 1d | 2012-07-11 | 2012-07-11 |  | 17d |  |  |
| 61 | 1.6.2.6.1.2.2 | Implementacion |  | 2d | 2012-07-11 | 2012-07-12 |  | 16d |  |  |
| 62 | 1.6.2.6.1.3 | **Menu Principal** |  | 1d | 2012-07-13 | 2012-07-13 | 59 | 16d | 0d |  |
| 63 | 1.6.2.6.1.3.1 | Diseño |  | 1d | 2012-07-13 | 2012-07-13 |  | 16d |  |  |
| 64 | 1.6.2.6.1.3.2 | Implementacion |  | 1d | 2012-07-13 | 2012-07-13 |  | 16d |  |  |
| 65 | 1.6.2.6.1.4 | **Deposito en efectivo** |  | 4d | 2012-07-16 | 2012-07-19 | 62 | 16d | 0d |  |
| 66 | 1.6.2.6.1.4.1 | Diseño |  | 1d | 2012-07-16 | 2012-07-16 |  | 19d |  |  |
| 67 | 1.6.2.6.1.4.2 | Implementacion |  | 4d | 2012-07-16 | 2012-07-19 |  | 16d | 0d |  |
| 68 | 1.6.2.6.1.5 | **Deposito por sobres, efectivo** |  | 2d | 2012-07-20 | 2012-07-21 | 65 | 16d | 0d |  |
| 69 | 1.6.2.6.1.5.1 | Diseño |  | 1d | 2012-07-20 | 2012-07-20 |  | 17d |  |  |
| 70 | 1.6.2.6.1.5.2 | Implementacion |  | 2d | 2012-07-20 | 2012-07-21 | 67 | 16d |  |  |
| 71 | 1.6.2.6.1.6 | **Deposito por sobres, documentos** |  | 2d | 2012-07-23 | 2012-07-24 | 68 | 16d | 0d |  |
| 72 | 1.6.2.6.1.6.1 | Diseño |  | 1d | 2012-07-23 | 2012-07-23 |  | 17d |  |  |
| 73 | 1.6.2.6.1.6.2 | Implementacion |  | 2d | 2012-07-23 | 2012-07-24 | 67 | 16d |  |  |
| 74 | 1.6.2.6.1.7 | **Conteo de dinero** |  | 2d | 2012-07-25 | 2012-07-26 | 71 | 16d | 0d |  |
| 75 | 1.6.2.6.1.7.1 | Diseño |  | 1d | 2012-07-25 | 2012-07-25 |  | 17d |  |  |
| 76 | 1.6.2.6.1.7.2 | Implementacion |  | 2d | 2012-07-25 | 2012-07-26 | 65 | 16d |  |  |

| ID | WBS | Task | Type | Duration | Start | Finish | Predecessors | Total slack | Free slack | Constraint |
| --- | --- | --- | --- | --- | --- | --- | --- | --- | --- | --- |
| 77 | 1.6.2.6.1.8 | **Pantalla de administracion** |  | 2d | 2012-07-27 | 2012-07-30 | 74 | 16d |  |  |
| 78 | 1.6.2.6.1.8.1 | Diseño |  | 1d | 2012-07-27 | 2012-07-27 |  | 17d |  |  |
| 79 | 1.6.2.6.1.8.2 | Implementacion |  | 2d | 2012-07-27 | 2012-07-30 |  | 16d |  |  |
| 80 | 1.6.3 | Primer version con conteo funcional | milestone | 0d | 2012-07-26 | 2012-07-26 |  | 19d | 3d | start no earlier than 2012-07-26 |
| 81 | 1.6.4 | Tareas automaticas |  | 4d | 2012-07-31 | 2012-08-03 | 54, 80 | 16d | 0d |  |
| 82 | 1.6.5 | **Impresion** |  | 8d | 2012-08-06 | 2012-08-15 |  | 13d |  |  |
| 83 | 1.6.5.1 | manejo general de impresora |  | 2d | 2012-08-06 | 2012-08-07 | 81 | 16d | 0d |  |
| 84 | 1.6.5.2 | **templates de impresion** |  | 6d | 2012-08-08 | 2012-08-15 |  | 13d | 0d |  |
| 85 | 1.6.5.2.1 | Recibo de deposito |  | 1d | 2012-08-08 | 2012-08-08 | 83 | 16d | 0d |  |
| 86 | 1.6.5.2.2 | Ticket para deposito por sobre, efectivo |  | 1d | 2012-08-09 | 2012-08-09 | 85 | 16d | 0d |  |
| 87 | 1.6.5.2.3 | Recibo de deposito por sobre, efectivo |  | 1d | 2012-08-10 | 2012-08-10 | 86 | 16d |  |  |
| 88 | 1.6.5.2.4 | Ticket para deposito por sobre, documento |  | 3d | 2012-08-08 | 2012-08-10 |  | 13d | 0d | start no earlier than 2012-08-08 |
| 89 | 1.6.5.2.5 | Recibo de deposito por sobre, documento |  | 1d | 2012-08-13 | 2012-08-13 | 88 | 13d | 0d |  |
| 90 | 1.6.5.2.6 | Informe de retiro |  | 2d | 2012-08-14 | 2012-08-15 | 89 | 13d |  |  |
| 91 | 1.6.6 | **Reportes** |  | 6d | 2012-08-16 | 2012-08-23 |  | 13d |  |  |
| 92 | 1.6.6.1 | **Reportes simples con filtrado por pantalla** |  | 6d | 2012-08-16 | 2012-08-23 |  | 13d |  |  |
| 93 | 1.6.6.1.1 | Reporte de depositos |  | 3d | 2012-08-16 | 2012-08-20 | 84 | 13d | 0d |  |
| 94 | 1.6.6.1.2 | Reporte de eventos |  | 3d | 2012-08-21 | 2012-08-23 | 93 | 13d | 0d |  |
| 95 | 1.6.7 | Monitor del sistema operativo |  | 3d | 2012-08-24 | 2012-08-28 | 94 | 13d | 0d |  |
| 96 | 1.6.8 | Version prototipo del software | milestone | 0d | 2012-09-05 | 2012-09-05 |  | 26d |  | start no earlier than 2012-09-05 |
| 97 | 1.6.9 | **Instalacion** |  | 18d | 2012-08-29 | 2012-09-21 |  | 13d |  |  |
| 98 | 1.6.9.1 | Configuracion general del equipo |  | 4d | 2012-08-29 | 2012-09-03 | 95 | 13d | 0d |  |
| 99 | 1.6.9.2 | Documento de configuracion |  | 3d | 2012-09-04 | 2012-09-06 | 98 | 13d | 0d |  |
| 100 | 1.6.9.3 | Configuracion del OS |  | 4d | 2012-09-07 | 2012-09-12 | 99 | 13d | 0d |  |
| 101 | 1.6.9.4 | Documento de instalacion |  | 2d | 2012-09-13 | 2012-09-14 | 100 | 13d | 0d |  |
| 102 | 1.6.9.5 | Capacitacion para la instalacion |  | 5d | 2012-09-17 | 2012-09-21 | 101 | 13d |  |  |

| ID | WBS | Task | Duration | Start | Finish | Predecessors | Total slack | Free slack | Constraint |
| --- | --- | --- | --- | --- | --- | --- | --- | --- | --- |
| 103 | 1.6.10 | **Mantenimiento y administracion del software** | 1d? | 2012-10-10 | 2012-10-10 |  | 0d |  |  |
| 104 | 1.6.10.1 | Backup | 1d? | 2012-10-10 | 2012-10-10 |  | 0d |  | start no earlier than 2012-10-10 |
| 105 | 1.6.10.2 | Procedimiento para purgar la base de datos | 1d? | 2012-10-10 | 2012-10-10 |  | 0d |  | start no earlier than 2012-10-10 |
| 106 | 1.7 | Comunicación exterior | 18.62d? | 2012-09-14 | 2012-10-10 |  | 0.38d |  | start no earlier than 2012-09-14 |
| 107 | 1.8 | **Fabricación prototipo** | 107d | 2012-05-16 | 2012-10-10 |  | 0d |  |  |
| 108 | 1.8.1 | Research touch screen disponibles. | 34.62d | 2012-07-19 | 2012-09-04 |  | 26.38d |  | finish no earlier than 2012-09-04 |
| 109 | 1.8.2 | Research impresoras caracteristicas y disponibilidad. | 45d | 2012-07-02 | 2012-08-30 |  | 29d |  |  |
| 110 | 1.8.3 | Research pc, caracteristicas y disponibilidad. | 5d | 2012-07-13 | 2012-07-19 |  | 60d |  | finish no earlier than 2012-07-19 |
| 111 | 1.8.4 | Research sensores. | 7d | 2012-07-02 | 2012-07-10 |  | 67d |  |  |
| 112 | 1.8.5 | Research actuadores. | 11d | 2012-07-02 | 2012-07-16 |  | 63d |  |  |
| 113 | 1.8.6 | Diseño general, geometria, ubicacion de los componentes. | 70d | 2012-07-02 | 2012-10-04 |  | 4d |  |  |
| 114 | 1.8.7 | Planos cableado. | 5d | 2012-07-02 | 2012-07-06 |  | 69d |  |  |
| 115 | 1.8.8 | **Esclusa** | 104d | 2012-05-16 | 2012-10-05 |  | 3d |  |  |
| 116 | 1.8.8.1 | **Versiones previas: Montado esclusa tas.** | 104d | 2012-05-16 | 2012-10-05 |  | 3d |  |  |
| 117 | 1.8.8.1.1 | Diseño mecanismo mecanico de cierre. | 39d | 2012-05-16 | 2012-07-09 |  | 3d | 0d | start no earlier than 2012-05-16 |
| 118 | 1.8.8.1.2 | Diseño mecanismo electro mecanico de cierre. | 14d | 2012-07-10 | 2012-07-26 | 117 | 3d | 0d |  |
| 119 | 1.8.8.1.3 | Stress test de la esclusa | 21d | 2012-07-27 | 2012-08-24 | 118 | 3d | 0d |  |
| 120 | 1.8.8.1.4 | Correcciones y mejoras | 30d | 2012-08-27 | 2012-10-05 | 119 | 3d |  |  |
| 121 | 1.8.9 | **Lata** | 53d | 2012-06-12 | 2012-08-22 |  | 0d |  |  |
| 122 | 1.8.9.1 | Diseno mecanismo mecanico de cierre. | 12d | 2012-06-12 | 2012-06-27 |  | 0d |  | start no earlier than 2012-06-12 |
| 123 | 1.8.9.2 | Diseno mecanismo electromecanico de cierre. | 12d | 2012-06-28 | 2012-07-13 | 122 | 0d |  |  |
| 124 | 1.8.9.3 | Stress test de la lata | 14d | 2012-07-16 | 2012-08-01 | 123 | 0d |  |  |
| 125 | 1.8.9.4 | Correcciones y mejoras | 15d | 2012-08-02 | 2012-08-22 | 124 | 0d |  |  |
| 126 | 1.8.10 | Fabricacion caja fuerte | 25d | 2012-08-23 | 2012-09-26 | 125 | 0d |  | finish no earlier than 2012-09-19 |
| 127 | 1.8.11 | Integración general | 5d | 2012-09-27 | 2012-10-03 | 126 | 0d |  |  |
| 128 | 1.8.12 | Test funcionales y de stress. | 5d | 2012-10-04 | 2012-10-10 | 127 | 0d |  |  |
